# 软件项目进度表模板

Schedule from MS Project, 2012-08-30 to 2012-11-13.
东大阿尔派

## Calendars

- 标准: Mon-Fri 08:00-12:00, 13:00-17:00; Sat-Sun off. Exceptions (off unless hours are given): 2012-09-29 (工作日), 2012-09-30 to 2012-10-07 (休假日).

## Resources

| Resource | Group |
| --- | --- |
| 赵 | design\code |
| 钱 |  |
| 孙 |  |
| 李 |  |
| 王 |  |

## Schedule

| ID | WBS | Task | Type | Duration | Start | Finish | Predecessors | Total slack | Free slack | Constraint | Work |
| --- | --- | --- | --- | --- | --- | --- | --- | --- | --- | --- | --- |
| 1 | 1 | **接受委托** |  | 6d | 2012-08-30 08:00 | 2012-09-06 17:00 |  |  |  |  | 9h |
| 2 | 1.1 | 制定启动计划 |  | 1d | 2012-08-30 08:00 | 2012-08-30 17:00 |  | 1.5d | 0d |  |  |
| 3 | 1.2 | 启动计划管理评审 | manual | 0.5d | 2012-08-31 08:00 | 2012-08-31 12:00 | 2 |  |  | start no earlier than 2012-08-31 08:00 | 4h |
| 4 | 1.3 | 召开项目启动会议 | manual | 0.12d | 2012-09-04 08:00 | 2012-09-04 09:00 | 3 |  |  | start no earlier than 2012-09-04 08:00 | 1h |
| 5 | 1.4 | 建立配置管理库 |  | 2d | 2012-09-04 09:00 | 2012-09-06 09:00 | 4 | 0.88d |  |  |  |
| 6 | 1.5 | 组织业务培训 | manual | 0.5d | 2012-09-06 08:00 | 2012-09-06 12:00 |  |  |  | start no earlier than 2012-09-06 08:00 | 4h |
| 7 | 2 | **项目策划** |  | 7d | 2012-08-30 08:00 | 2012-09-07 17:00 |  |  |  |  | 14h |
| 8 | 2.1 | 项目过程定义 | milestone | 0d | 2012-08-30 08:00 | 2012-08-30 08:00 |  | 5.25d | 0d |  |  |
| 9 | 2.2 | 项目估计 |  | 0.5d | 2012-08-30 08:00 | 2012-08-30 12:00 | 8 | 5.25d | 0d |  | 4h |
| 10 | 2.3 | 里程碑策划 |  | 0.12d | 2012-08-30 13:00 | 2012-08-30 14:00 | 9 | 5.25d | 0d |  | 1h |
| 11 | 2.4 | 测试活动的策划 |  | 0.25d | 2012-08-30 14:00 | 2012-08-30 16:00 | 10 | 5.25d | 0d |  | 2h |
| 12 | 2.5 | 同行评审策划 |  | 0.12d | 2012-08-30 16:00 | 2012-08-30 17:00 | 11 | 5.25d | 0d |  | 1h |
| 13 | 2.6 | 策划结果执行同行评审 |  | 0.12d | 2012-08-31 08:00 | 2012-08-31 09:00 | 12 | 5.25d | 0d |  | 1h |
| 14 | 2.7 | 制订进度表 |  | 0.5d | 2012-08-31 09:00 | 2012-08-31 14:00 | 13 | 5.25d | 0d |  | 4h |
| 15 | 2.8 | 开发计划说明会 |  | 0.12d | 2012-08-31 14:00 | 2012-08-31 15:00 | 14 | 5.25d |  |  | 1h |
| 16 | 3 | **需求理解** |  | 5d | 2012-09-06 08:00 | 2012-09-12 17:00 | 7 |  |  |  | 5h |
| 17 | 3.1 | 召开阶段启动会议 |  | 0.12d | 2012-09-06 08:00 | 2012-09-06 09:00 |  | 0.38d | 0d |  | 1h |
| 18 | 3.2 | 需求理解 |  | 4d | 2012-09-06 09:00 | 2012-09-12 09:00 | 17 | 0.38d | 0d |  |  |
| 19 | 3.3 | 需求评审 |  | 0.5d | 2012-09-12 09:00 | 2012-09-12 14:00 | 18 | 0.38d |  |  | 4h |
| 20 | 4 | **详细设计** |  | 5d | 2012-09-13 08:00 | 2012-09-19 17:00 | 16 |  |  |  | 1h |
| 21 | 4.1 | 召开阶段启动会议 |  | 0.12d | 2012-09-13 08:00 | 2012-09-13 09:00 |  | 0.88d |  |  | 1h |
| 22 | 4.2 | 详细设计 | manual | 3d | 2012-09-14 08:00 | 2012-09-18 17:00 | 21 |  |  | finish no earlier than 2012-09-18 17:00 |  |
| 23 | 4.3 | 详细设计评审 |  | 1d | 2012-09-19 08:00 | 2012-09-19 17:00 | 22 | 0d |  |  |  |
| 24 | 5 | **编码和单体** |  | 15d | 2012-09-20 08:00 | 2012-10-17 17:00 | 20 |  |  |  | 5h |
| 25 | 5.1 | 召开阶段启动会议 |  | 0.12d | 2012-09-20 08:00 | 2012-09-20 09:00 |  | 19.88d |  |  | 1h |
| 26 | 5.2 | 编码 | manual | 10d | 2012-09-20 08:00 | 2012-10-10 17:00 |  |  |  | start no earlier than 2012-09-20 08:00 |  |
| 27 | 5.3 | 单体测试 |  | 2d | 2012-10-11 08:00 | 2012-10-12 17:00 | 26 | 0.5d | 0d |  |  |
| 28 | 5.4 | 代码检查 |  | 2d | 2012-10-15 08:00 | 2012-10-16 17:00 | 27 | 0.5d | 0d |  |  |
| 29 | 5.5 | 建立源代码基准 |  | 0.5d | 2012-10-17 08:00 | 2012-10-17 12:00 | 28 | 0.5d |  |  | 4h |

| ID | WBS | Task | Duration | Start | Finish | Predecessors | Total slack | Free slack | Work |
| --- | --- | --- | --- | --- | --- | --- | --- | --- | --- |
| 30 | 6 | **系统测试** | 14d | 2012-10-15 08:00 | 2012-11-01 17:00 |  |  |  | 11h |
| 31 | 6.1 | 召开阶段启动会议 | 0.12d | 2012-10-15 08:00 | 2012-10-15 09:00 |  | 0.62d | 0d | 1h |
| 32 | 6.2 | 集成测试设计 | 2d | 2012-10-15 09:00 | 2012-10-17 09:00 | 31 | 0.62d | 0d |  |
| 33 | 6.3 | 集成测试设计评审 | 0.12d | 2012-10-17 09:00 | 2012-10-17 10:00 | 32 | 0.62d | 0d | 1h |
| 34 | 6.4 | 建立集成测试基准 | 0.12d | 2012-10-17 10:00 | 2012-10-17 11:00 | 33 | 0.62d | 0d | 1h |
| 35 | 6.5 | 测试环境搭建 | 0.5d | 2012-10-17 11:00 | 2012-10-17 16:00 | 34 | 0.62d | 0d | 4h |
| 36 | 6.6 | 准备测试数据 | 0.5d | 2012-10-17 16:00 | 2012-10-18 11:00 | 35 | 0.62d | 0d | 4h |
| 37 | 6.7 | 执行集成测试 | 8d | 2012-10-18 11:00 | 2012-10-30 11:00 | 36 | 0.62d | 0d |  |
| 38 | 6.8 | 问题修正 | 2d | 2012-10-30 11:00 | 2012-11-01 11:00 | 37 | 0.62d |  |  |
| 39 | 7 | **交付和验收** | 7.62d | 2012-11-02 08:00 | 2012-11-13 14:00 | 30 | 0d |  | 5h |
| 40 | 7.1 | 召开阶段启动会议 | 0.12d | 2012-11-02 08:00 | 2012-11-02 09:00 |  | 0d |  | 1h |
| 41 | 7.2 | 代码复查 | 2d | 2012-11-02 09:00 | 2012-11-06 09:00 | 40 | 0d |  |  |
| 42 | 7.3 | 建立待发布产品 | 1d | 2012-11-06 09:00 | 2012-11-07 09:00 | 41 | 0d |  |  |
| 43 | 7.4 | 产品发布 | 0.5d | 2012-11-07 09:00 | 2012-11-07 14:00 | 42 | 0d |  | 4h |
| 44 | 7.5 | 对应客户验收的问题 | 3d | 2012-11-07 14:00 | 2012-11-12 14:00 | 43 | 0d |  |  |
| 45 | 7.6 | 客户验收通过 | 1d | 2012-11-12 14:00 | 2012-11-13 14:00 | 44 | 0d |  |  |
| 46 | 8 | **项目总结** | 4.5d | 2012-11-02 09:00 | 2012-11-08 14:00 | 40 | 3d |  | 8h |
| 47 | 8.1 | 项目总结 | 2d | 2012-11-02 09:00 | 2012-11-06 09:00 |  | 3d | 0d |  |
| 48 | 8.2 | 个人总结 | 2d | 2012-11-06 09:00 | 2012-11-08 09:00 | 47 | 3d | 0d |  |
| 49 | 8.3 | 项目总结评审 | 0.5d | 2012-11-06 09:00 | 2012-11-06 14:00 | 47 | 5d |  | 4h |
| 50 | 8.4 | 项目总结会议 | 0.5d | 2012-11-08 09:00 | 2012-11-08 14:00 | 48 | 3d |  | 4h |
